# Project Plan

Schedule from MS Project, 2014-02-03 to 2016-01-01.
STFC

## Calendars

- Standard: Mon-Fri 08:00-12:00, 13:00-17:00; Sat-Sun off.

## Resources

| Resource |
| --- |
| Jose |
| Roman |
| Owen |
| Samuel |
| Nick |
| Martyn |
| Michael |
| Karl |
| Anders |
| Stuart |
| Jon |
| Wenduo |
| Andre |
| Gesner |

## Schedule

| ID | WBS | Task | Type | Duration | Start | Finish | Predecessors | Total slack | Free slack | Constraint | Resources | Work |
| --- | --- | --- | --- | --- | --- | --- | --- | --- | --- | --- | --- | --- |
| 1 | 1 | **Release Schedule** |  | 456d | 2014-02-03 | 2015-11-02 |  | 0d |  |  |  | 8800h |
| 2 | 1.1 | Release 3.1 | milestone, manual | 0d | 2014-02-03 | 2014-02-03 |  |  |  |  |  |  |
| 3 | 1.2 | **Release 3.2** |  | 65d | 2014-02-03 | 2014-05-02 |  |  |  |  |  | 3680h |
| 4 | 1.2.1 | **Development** |  | 60d | 2014-02-03 | 2014-04-25 |  |  |  |  |  | 3680h |
| 5 | 1.2.1.1 | Multi data fitting |  | 2mo | 2014-02-03 | 2014-03-28 |  | 20d |  |  | Jose | 320h |
| 6 | 1.2.1.2 | CLI |  | 2mo | 2014-02-03 | 2014-03-28 |  | 20d |  |  | Owen | 320h |
| 7 | 1.2.1.3 | History depth / extracting scripts |  | 3mo | 2014-02-03 | 2014-04-25 |  | 0d |  |  | Samuel | 480h |
| 8 | 1.2.1.4 | Load performance History |  | 2mo | 2014-02-03 | 2014-03-28 |  | 20d |  |  | Samuel | 320h |
| 9 | 1.2.1.5 | Design guidelines for GUIs |  | 1mo | 2014-02-03 | 2014-02-28 |  | 40d | 0d |  | Martyn | 160h |
| 10 | 1.2.1.6 | Algorithm naming conventions/standards |  | 2mo | 2014-02-03 | 2014-03-28 |  | 20d |  |  | Martyn | 320h |
| 11 | 1.2.1.7 | Better usage in documentation |  | 2mo | 2014-02-24 | 2014-04-18 |  | 445d |  | finish no earlier than 2014-04-18 | Anders | 320h |
| 12 | 1.2.1.8 | Specify API for instr. control | manual | 2mo | 2014-02-14 | 2014-04-10 |  |  |  |  | Nick | 320h |
| 13 | 1.2.1.9 | Repo. for instrument files |  | 2mo | 2014-02-03 | 2014-03-28 |  | 20d |  |  | Anders | 320h |
| 14 | 1.2.1.10 | Multiple scattering requirements | manual | 3mo | 2014-02-03 | 2014-04-25 |  |  |  |  | Jon | 480h |
| 15 | 1.2.1.11 | Mslice interface | manual | 2mo | 2014-02-03 | 2014-03-28 |  |  |  |  | Andre | 320h |
| 16 | 1.2.2 | Testing | manual | 4d | 2014-04-28 | 2014-05-01 |  |  |  |  |  |  |
| 17 | 1.2.3 | Release | manual | 1d | 2014-05-02 | 2014-05-02 | 16 |  |  |  |  |  |
| 18 | 1.3 | **Release 3.3** |  | 135d | 2014-02-03 | 2014-08-08 |  | 0d |  |  |  | 3200h |
| 19 | 1.3.1 | **Development** |  | 60d | 2014-02-03 | 2014-04-25 |  |  |  |  |  | 3200h |
| 20 | 1.3.1.1 | Tiling displays | manual | 6mo | 2014-02-03 | 2014-07-18 |  |  |  |  | Roman | 960h |
| 21 | 1.3.1.2 | Improve Vates defaults | manual | 4mo | 2014-02-03 | 2014-05-23 |  |  |  |  | Michael | 640h |
| 22 | 1.3.1.3 | Documentation maintenance | manual | 4mo | 2014-02-03 | 2014-05-23 |  |  |  |  | Karl | 640h |
| 23 | 1.3.1.4 | Plotting improvements |  | 6mo | 2014-02-14 | 2014-07-31 |  | 371d |  | start no earlier than 2014-02-14 | Martyn | 960h |
| 24 | 1.3.2 | Testing | manual | 4d | 2014-08-04 | 2014-08-07 |  |  |  |  |  |  |
| 25 | 1.3.3 | Release | manual | 1d | 2014-08-08 | 2014-08-08 | 24 |  |  |  |  |  |
| 26 | 1.4 | Release 3.4 | manual | 5d | 2014-10-28 | 2014-11-03 |  |  |  |  |  |  |

Notes:
- 8: Need to work out how to store the history. Sublevels in the nexus format should be avoided to improve performance. Could also make use of the levels to indicate levels within workflow algorithms.
- 9: This could then be applied to all GUIs. Useful for Improving existing GUIs and writing the new GUI course.
- 10: Algorithm names are inconsistent. Define guidelines for how you come up with a name for an algorithm, e.g. use Create rather than Make/Generate for all, if for facility then use this
- 11: Usage needs to be an actual example of how to use algorithms not just a one line call
- 12: Mainly a requirements gathering exercise.
- 14: Mcstas? / Other packages? / Possible apporaches?
- 15: One person working full time. Initial step is to come up with a unification of MSlice and DAVE MSlice.
- 21: Needs input from instrument scientists for both SXD and INS
- 22: Parcel out algorithms - grade each one Good/OK/Inadequate/Missing. Then assign the ones that need tackling. Workflow algorithms need particular attention (flow charts). Amend wiki-maker to create new categories as sub-categories of algorithms. Ensure all info on wiki page is on offline docs & vice-versa. Additional pages in offline docs (beyond algorithms & functions). Open up wiki accounts or create them for scientists - encourage them to contribute to technique-specific pages, perhaps with designated POC for each. Documentation updates is part of the definition of done for a ticket. Clean up out of date pages. Have short/long description on properties, short for mouseover, long for docs
- 23: Axes not joining up 1D plot defaults e.g. box around all Insets (plot in plot) Fitting plots: Residuals should be underneath data Better defaults on contour plots based on inspecting data. Correct formatting of plot axes(square brackets not /, superscipts etc) Shifting curves by arbitrary amounts to see overlayed peaks Generate script or commands to reproduce current plot Changing horizontal axis from Q->Q^2, optionally Plotting counts/bin width. Saving project can somtimes miss plot settings

| ID | WBS | Task | Type | Duration | Start | Finish | Predecessors | Total slack | Resources | Work |
| --- | --- | --- | --- | --- | --- | --- | --- | --- | --- | --- |
| 27 | 1.5 | **Release 3.5** |  | 5d | 2015-02-02 | 2015-02-06 |  |  |  | 1920h |
| 28 | 1.5.1 | Masking redesign(LT) | manual | 12mo | 2014-02-03 | 2015-01-02 |  |  | Nick | 1920h |
| 29 | 1.6 | Release 3.6 | manual | 1d | 2015-05-08 | 2015-05-08 |  |  |  |  |
| 30 | 1.7 | Release 3.7 | manual | 1d | 2015-08-07 | 2015-08-07 |  |  |  |  |
| 31 | 1.8 | Release 3.8 | manual | 1d | 2015-11-02 | 2015-11-02 |  |  |  |  |
| 32 | 2 | **To Schedule** |  | 480d? | 2014-03-03 | 2016-01-01 |  | 0d |  | 1288h |
| 33 | 2.1 | " Workflow " commands - user specified syntax | manual | 2mo | 2014-03-03 | 2014-04-25 |  |  |  |  |
| 34 | 2.2 | Workflow Algorithms | manual | 1mo | 2014-03-03 | 2014-03-28 |  |  |  |  |
| 35 | 2.3 | Improve Existing GUIs |  | 9mo | 2014-03-03 | 2014-11-07 | 9 | 300d |  |  |
| 36 | 2.4 | Load performance HDF5 | manual | 2mo | 2014-03-03 | 2014-04-25 |  |  | Stuart | 320h |
| 37 | 2.5 | Resolution convolution | manual | 4mo | 2014-03-03 | 2014-06-20 |  |  |  |  |
| 38 | 2.6 | Multiple scattering implementation | manual | 12mo | 2014-03-03 | 2015-01-30 |  |  |  |  |
| 39 | 2.7 | Distributed algs | manual | 3mo | 2014-03-03 | 2014-05-23 |  |  |  |  |
| 40 | 2.8 | Distributed fitting (quantification) | manual | 6mo | 2014-03-03 | 2014-08-15 |  |  |  |  |
| 41 | 2.9 | Distributed fitting Interface to 3rd party packages | manual | 6mo | 2014-03-03 | 2014-08-15 |  |  |  |  |
| 42 | 2.10 | Vates pub. quality plots | manual | 3mo | 2014-03-03 | 2014-05-23 |  |  |  |  |
| 43 | 2.11 | Instrument control implementation | manual | 5mo | 2014-04-11 | 2014-08-28 | 12 |  |  |  |
| 44 | 2.12 | Remote Mantid project (infrastructure) | manual | 3mo | 2014-03-03 | 2014-05-23 |  |  |  |  |
| 45 | 2.13 | Remote Thick Client | manual | 6mo | 2014-03-03 | 2014-08-15 |  |  |  |  |
| 46 | 2.14 | Web based Mantid UI | manual | 8mo | 2014-03-03 | 2014-10-10 |  |  |  |  |
| 47 | 2.15 | Vates client/server | manual | 6mo | 2014-03-03 | 2014-08-15 |  |  |  |  |
| 48 | 2.16 | Units | manual | 4mo | 2014-03-03 | 2014-06-20 |  |  |  |  |
| 49 | 2.17 | VATES training Course | manual | 1mo | 2014-03-03 | 2014-03-28 |  |  |  |  |
| 50 | 2.18 | Mantid GUIs training course for Instrument Scientists | manual | 2mo | 2014-03-03 | 2014-04-25 |  |  |  |  |
| 51 | 2.19 | Technique specific training course i.e. SANS interface | manual | 1mo | 2014-03-03 | 2014-03-28 |  |  |  |  |
| 52 | 2.20 | Investigate links to external neutron training schools | manual | 1mo | 2014-03-03 | 2014-03-28 |  |  |  |  |
| 53 | 2.21 | SANS delQ for ISIS | manual | 1mo | 2014-03-03 | 2014-03-28 |  |  |  |  |
| 54 | 2.22 | SANS Absorption Correction inc MS | manual | 1mo? | 2015-02-02 | 2015-02-27 | 38 |  |  |  |
| 55 | 2.23 | Basic SANS Model fitting in Mantid UIs | manual | 5mo | 2014-03-03 | 2014-07-18 |  |  |  |  |
| 56 | 2.24 | Other SANS Corrections | manual | 12mo | 2014-03-03 | 2015-01-30 |  |  |  |  |
| 57 | 2.25 | REFL Verification of the ISIS quick scripts (with liquids) | manual | 2mo | 2014-03-03 | 2014-04-25 |  |  |  |  |
| 58 | 2.26 | REFL ISIS simple | manual | 2mo | 2014-03-03 | 2014-04-25 |  |  |  |  |
| 59 | 2.27 | REFL Artur GUI working with Liquids | manual | 4mo | 2014-03-03 | 2014-06-20 |  |  |  |  |
| 60 | 2.28 | REFL Refactor complex GUI to use mantid | manual | 2mo | 2014-03-03 | 2014-04-25 |  |  |  |  |
| 61 | 2.29 | REFL Make complex GUI work for ISIS instruments | manual | 2mo | 2014-03-03 | 2014-04-25 |  |  |  |  |
| 62 | 2.30 | REFL Offspec tools sub project | manual | 24mo? | 2014-03-03 | 2016-01-01 |  |  |  |  |
| 63 | 2.31 | REFL Benchmarks | manual | 1mo | 2014-03-03 | 2014-03-28 |  |  |  |  |
| 64 | 2.32 | Fix rectangular detector issues | manual | 3mo | 2014-03-03 | 2014-05-23 |  |  |  |  |
| 65 | 2.33 | PDF workflow tbd (meeting 15/1/14) | manual | 12mo | 2014-03-03 | 2015-01-30 |  |  |  |  |
| 66 | 2.34 | Visible Time-slicing | manual | 5mo | 2014-03-03 | 2014-07-18 |  |  |  |  |
| 67 | 2.35 | Correct slicing of fast logs | manual | 2mo | 2014-03-03 | 2014-04-25 |  |  | Wenduo | 320h |
| 68 | 2.36 | Improve Single xtal UX | manual | 3mo | 2014-03-03 | 2014-05-23 |  |  |  |  |
| 69 | 2.37 | Crystal Plan | manual | 4mo | 2014-03-03 | 2014-06-20 |  |  | Andre | 640h |
| 70 | 2.38 | Unify Instrument calibration | manual | 6mo | 2014-03-03 | 2014-08-15 |  |  |  |  |
| 71 | 2.39 | Planning tools (port existing) | manual | 3mo | 2014-03-03 | 2014-05-23 |  |  |  |  |
| 72 | 2.40 | Planning tools (new) | manual | 7mo | 2014-03-03 | 2014-09-12 |  |  |  |  |
| 73 | 2.41 | Tools for comparing model to data | manual | 3mo | 2014-03-03 | 2014-05-23 |  |  |  |  |
| 74 | 2.42 | Vates improvements to UX | manual | 3mo | 2014-03-03 | 2014-05-23 |  |  |  |  |
| 75 | 2.43 | Quantification include different resolution models | manual | 3mo | 2014-03-03 | 2014-05-23 |  |  |  |  |
| 76 | 2.44 | TAS | manual | 6mo | 2014-03-03 | 2014-08-15 |  |  |  |  |
| 77 | 2.45 | Implementation of ‘beam stop out’ transmission measurements | manual | 2mo | 2014-03-03 | 2014-04-25 |  |  |  |  |
| 78 | 2.46 | SANS of different time bins for monitors and detectors | manual | 1d? | 2014-03-03 | 2014-03-03 |  |  | Gesner | 8h |
| 79 | 2.47 | SANS GRASP-compatible reduced data output format | manual | 1d? | 2014-03-03 | 2014-03-03 |  |  |  |  |
| 80 | 2.48 | SANS Reactor TOF reduction procedures | manual | 1d? | 2014-03-03 | 2014-03-03 |  |  |  |  |
| 81 | 2.49 | SANS cradle-to-grave automation of parametric expts | manual | 1d? | 2014-03-03 | 2014-03-03 |  |  |  |  |

Notes:
- 28: "Revisit requirements / Plan for development"
- 33: User-generated "workflow" commands + workflow tool
- 34: Documentation for these should include a workflow diagram. There are desires for improvements to the PropertyManager and parameter passing."We need some improved checking tools for python / -- TO BE AGREED BY ALL AFTER THOUGHT-- / Future workflow algs as Python algs / Existing ported as necessary" / "Useful article / http://stackoverflow.com/questions/1428872/pylint-pychecker-or-pyflakes / See e.g. https://pypi.python.org/pypi/coverage/ Pylint http://www.pylint.org// pyflakes https://pypi.python.org/pypi/pyflakes/ pep8 https://pypi.python.org/pypi/pep8 "
- 35: Common look and feel and experience and documentation and command line control. / Would need to change both C++ and Python GUIs. Serious amount of effort involved.
- 36: One developer working full time on this issue. HDF versions of the load algorithms using the high-level c++ API. As a start, write these as new algorithms and set the loadings score to be higher.
- 37: Can an instrument see this predicted feature
- 39: Already implemented at ORNL. If other sites can copy the ORNL back end, it's very little work. If they have to implement their own backends, then 3 months is about right.Assumes batch submission, not interactive mode. Any algorithm/launch script modification for specific reductions is additional.
- 41: Needs a ist of packages in order.Better detail on estimated needs the actual packages as there will be no complete general answer
- 44: Effort from local computing/networking facilities and cybersecurity will be required.Abstract and standardise backend webservices. Compute infrastructure. Authentication and Authorization.
- 46: Look into using a ipython notebook as one of the web interfaces. There would probably be other simplier interfaces for more canned tasks.
- 47: Currently requires mantid on the server side. Could be "easy" if the files exist on the server and the client is bare paraview. Mantid would need to believe that there is a local workspace when it is on the server for this solution to work. Doing more than looking at existing MD files will be more challenging.
- 48: Could be implemented using boost units. TimeSeriesProperty first. Would then go about modifying the Mantid Unit type to include a convertable quantity. Needs to be hooked up into plotting. May affect the Dimensions of MDWorkspaces. TimeSeriesProperty should be done first.
- 49: Step by step examples + VisFest
- 50: Done in QML need to move to QT5 first. Need good guidelines written first. For example new GUIs must come with full documentation (see VSI documentation for standard).
- 51: Written and led by Instrument scientists supported by Dev teameffort for dev team support
- 53: This is already implemented at SNS and should "just work"
- 54: Will this be covered by the general implemntation?
- 55: Needs discusion with instrument scientists and determining where the line gets drawn between Mantid and SasView
- 56: #Correction StepApplied By ISIS SANSORNL SANS 1Dezingering/ (for removal of spikes from cosmic rays, etc)Spatial & time masking YNot seen this prob! 2DAQ deadtime / (delay from readout and ADC conversion) 3Detector deadtime / (delay from intrinsic ion pair/photon production) 4Detector flat-field / (to give uniform response from all pixels)Flood file YY 5Detector flux response / (in case count rate is not linear with incident flux) 6Detector dark current / (source on detector background)Shutter closed run Assumed negligibleY 7Natural background / (source off detector background) Assumed negligible 8Incident flux & measurement time / (for per neutron per second normalisation)Incident beam monitor YY 9Detector efficiency / (or just ratio to monitor efficiency)Direct beam file Y(Y) 10Detector coordinate distortion / (to compensate for electronics)Coordinate shifts from holey mask data YY 11Detector spherical dilation (parallax) / (for larger solid area of pixels at wider angles) ? 12Detector detection depth (gondola effect) / (for greater path length at wider angles) Only affects LOQ (2014-)Not an issue with tubes 13Probe polarisation (SAXS only?) / (scattering is dependent on polarisation) 14Inelasticity (SANS only!) / (to compensate for thermalisation in sample) Assume sam bkg does it 15Sample transmission / (to compensate for absorbtion by sample)Transmission monitor data YY 16Sample self-absorbtion / (for greater path length at wider angles)Calculation using transmission data YY 17Sample thickness / (for per cm normalisation)Physical measurement (or assumption!) YY 18Pixel health/Detector shadowing/ (to exclude pixels from data reduction)Spatial masking YY 19Absolute intensity scaling / (if you are going to do things properly…)Use of known standard scatterer YY 20Sample background subtraction / (to get the actual sample scattering)Can measurement and data YY 21Radial/azimuthal averaging / (to convert 2D data into 1D data; I(Q) vs Q)Reduce 1D YY The following corrections could be applied during data reduction, but the consensus view is that they are best handled as part of data analysis 22Multiple scattering 23Instrumental smearing due to: / a) Polychromaticity / b)Beam divergence / c)Beam profile / d)Sample thickness variations / e)Detector positioning variations
- 57: Full time effort for one SNS developer with help from ISIS. Required step for below.
- 58: Need input from instrument scientists. Need an agreed away to sum spectra to achieve a point detector. Max and Tim and Artur to agree this.
- 59: Get the GUI working for liquids. Don't worry about using Mantid at this point. SNS task.
- 60: Benchmarks are important at this point. SNS task.
- 61: ISIS task with SNS help.
- 62: No idea how long this would take. Would need to be largely driven by the instrument scientists.
- 63: Should be quite straight forward to do. Should create performance tests in Mantid for the reflectometry modules.
- 64: One person fixing algorithms using FindNearstNeighbours and renaming algorithms. Another IDetector that is "flat group of lpsd" would make this much easier.
- 66: Should create a reusable widget (stand-alone and docked in other guis). Allow for (over)plotting log values, selecting ranges to keep/delete, and looping over log values (e.g. temperature every 5 degrees) and annotating the filter on the plot. Needs lots of planning/design. The plotting is the big unknown."Also from SANS / A tool that allows us to time slice a file into a certain number of linear or logarithmic steps without us having to know/look up the length of the run. At present we have to find the file (in the journal file normally), work out how long it was, calculate the step size we want and then use the slice tool. It would be handy (for a quick check to see if something is changing with time) for Mantid to slice a file in half or into 8 (or whatever number you want, lin or log) without having to check the length of a run. / and / A generic filter tool which would allow us to filter out or only use data between specific values e.g. between certain temperatures, when the fast shutter is open, remove the data when the fast shutter was closed etc. If we log the appropriate values then they should be in the nxs file for us to filter on. / "
- 69: One person (Andrei) working full time on this. Should mostly involve swapping out python functionality for Mantid functionality.
- 70: Hard to estimate without a review of what we have so far and what we are missing
- 71: Includes porting Horace Planner, Chop, etc to Mantid.
- 72: New tools for resolution planning and general experiment planning.
- 73: Includes; Loading various model data files or functions, rebinning model or data onto same grid.
- 74: Improvements to various GUIs and CLIs. Probably needs more input from instrument scientists. Dependent on the outcomes of MSlice, VATES defaults and general scriptability tasks.
- 76: Depends on MD handling weights
- 77: Also adds support for D33 (at ILL) and Bilby (at ANSTO)
- 80: * .; ; ·;; ·It is vitally important that reactor facilities employing TOF techniques (eg, D33 and Bilby) learn from the experience that Mantid has with TOF data reduction and that their Users get the same answers from the same samples that ISIS or SNS do.
- 81: ·Move to cradle-to-grave automation of parametric experiments (ie, where one script sets sample changer positions, temperatures, etc, BEGINs & ENDs runs, loads the appropriate sample and can data into Mantid, reduces the data, writes the reduced data out, and also sends it to an appropriate analysis program)
